# Sist_Gestion_de_No_Conformidades

Schedule from MS Project, 2019-09-07 to 2019-12-30, A marks actual dates.
Construcción

## Calendars

- Gestor de No Conformidades: Mon-Sat 08:00-13:00, 14:00-17:30; Sun off. Exceptions (off unless hours are given): 2019-10-10 (Octubre), 2019-10-25 (Diciembre).

## Resources

| Resource |
| --- |
| Analista |
| Arquitecto |
| Gestor de Configuración |
| Gestor de Calidad |
| Programador |
| Probador |
| Jefe de Proyecto |

## Schedule

| ID | WBS | Task | Type | Duration | Start | Finish | Predecessors | Complete | Remaining | Baseline start | Baseline finish | Baseline duration | Total slack | Resources | Work | Actual work |
| --- | --- | --- | --- | --- | --- | --- | --- | --- | --- | --- | --- | --- | --- | --- | --- | --- |
| 1 | 1 | **Automatización del Proceso de No Conformidades** |  | 101d | 2019-09-07 A | 2019-12-30 |  | 20% | 80.95d | 2019-09-07 | 2019-12-30 | 101d | 0d |  | 2032h | 429h |
| 2 | 1.1 | **Fase de Inicio** |  | 27d | 2019-09-07 A | 2019-10-07 A |  | 100% |  | 2019-09-07 | 2019-10-07 | 27d |  |  | 408h | 408h |
| 3 | 1.1.1 | **Modelado de procesos** |  | 15d | 2019-09-07 A | 2019-09-24 A |  | 100% |  | 2019-09-07 | 2019-09-24 | 15d |  |  | 256h | 256h |
| 4 | 1.1.1.1 | Describir el sistema propuesto y sus características |  | 0.5d | 2019-09-07 A | 2019-09-07 A |  | 100% |  | 2019-09-07 | 2019-09-07 | 0.5d |  | Jefe de Proyecto | 4h | 4h |
| 5 | 1.1.1.2 | Describir el sistema propuesto y sus características |  | 0.5d | 2019-09-07 A | 2019-09-09 A | 4 | 100% |  | 2019-09-07 | 2019-09-09 | 0.5d |  | Jefe de Proyecto | 4h | 4h |
| 6 | 1.1.1.3 | Seleccionar el gestor de configuración a utilizar |  | 2d | 2019-09-09 A | 2019-09-10 A | 5 | 100% |  | 2019-09-09 | 2019-09-10 | 2d |  | Gestor de Configuración | 16h | 16h |
| 7 | 1.1.1.4 | Identificar los elementos de configuración, los componentes y los productos |  | 3d | 2019-09-10 A | 2019-09-12 A | 6SS+5% | 100% |  | 2019-09-10 | 2019-09-12 | 3d |  | Gestor de Configuración | 24h | 24h |
| 8 | 1.1.1.5 | **Generar Modelo de CU del Negocio** |  | 14d | 2019-09-09 A | 2019-09-24 A |  | 100% |  | 2019-09-09 | 2019-09-24 | 14d |  |  | 208h | 208h |
| 9 | 1.1.1.5.1 | **Elaborar marco teórico** |  | 8d | 2019-09-09 A | 2019-09-17 A |  | 100% |  | 2019-09-09 | 2019-09-17 | 8d |  |  | 64h | 64h |
| 10 | 1.1.1.5.1.1 | Identificar los procesos a automatizar |  | 5d | 2019-09-09 A | 2019-09-13 A | 6SS | 100% |  | 2019-09-09 | 2019-09-13 | 5d |  | Analista | 40h | 40h |
| 11 | 1.1.1.5.1.2 | Identificar la tecnología a utilizar para el desarrollo del proyecto |  | 3d | 2019-09-13 A | 2019-09-17 A | 10 | 100% |  | 2019-09-13 | 2019-09-17 | 3d |  | Analista | 24h | 24h |
| 12 | 1.1.1.5.2 | Identificar actores, trabajadores y posibles casos de uso del negocio |  | 2d | 2019-09-09 A | 2019-09-10 A | 10SS | 100% |  | 2019-09-09 | 2019-09-10 | 2d |  | Analista | 16h | 16h |
| 13 | 1.1.1.5.3 | Construir diagrama de casos de uso |  | 1d | 2019-09-10 A | 2019-09-11 A | 12 | 100% |  | 2019-09-10 | 2019-09-11 | 1d |  | Analista | 8h | 8h |
| 14 | 1.1.1.5.4 | Describir los procesos a partir del diagrama de actividades |  | 2d | 2019-09-11 A | 2019-09-13 A | 13 | 100% |  | 2019-09-11 | 2019-09-13 | 2d |  | Analista | 16h | 16h |
| 15 | 1.1.1.5.5 | Conformar la Planilla de Especifícación de cada caso de uso |  | 3d | 2019-09-13 A | 2019-09-17 A | 14 | 100% |  | 2019-09-13 | 2019-09-17 | 3d |  | Analista | 24h | 24h |
| 16 | 1.1.1.5.6 | Realizar lista de chequeo de los artefactos |  | 2d | 2019-09-17 A | 2019-09-19 A | 15, 11 | 100% |  | 2019-09-17 | 2019-09-19 | 2d |  | Gestor de Calidad | 16h | 16h |
| 17 | 1.1.1.5.7 | Realizar commit de los artefactos |  | 1d | 2019-09-17 A | 2019-09-18 A | 15 | 100% |  | 2019-09-17 | 2019-09-18 | 1d |  | Gestor de Configuración | 8h | 8h |
| 18 | 1.1.1.5.8 | **Generar Modelo de Análisis/Diseño del Negocio** |  | 6d | 2019-09-17 A | 2019-09-24 A |  | 100% |  | 2019-09-17 | 2019-09-24 | 6d |  |  | 56h | 56h |
| 19 | 1.1.1.5.8.1 | Describir las entidades del negocio |  | 2d | 2019-09-17 A | 2019-09-19 A | 15 | 100% |  | 2019-09-17 | 2019-09-19 | 2d |  | Analista | 16h | 16h |
| 20 | 1.1.1.5.8.2 | Desarrollar modelos de dominio que represente la unidad de negocio |  | 1d | 2019-09-19 A | 2019-09-20 A | 19 | 100% |  | 2019-09-19 | 2019-09-20 | 1d |  | Analista | 8h | 8h |
| 21 | 1.1.1.5.8.3 | Identificar las reglas de negocio |  | 1d | 2019-09-20 A | 2019-09-21 A | 20 | 100% |  | 2019-09-20 | 2019-09-21 | 1d |  | Analista | 8h | 8h |
| 22 | 1.1.1.5.8.4 | Realizar lista de chequeo de los artefactos |  | 2d | 2019-09-21 A | 2019-09-24 A | 21 | 100% |  | 2019-09-21 | 2019-09-24 | 2d |  | Gestor de Calidad | 16h | 16h |
| 23 | 1.1.1.5.8.5 | Realizar commit de los artefactos |  | 1d | 2019-09-21 A | 2019-09-23 A | 21 | 100% |  | 2019-09-21 | 2019-09-23 | 1d |  | Gestor de Configuración | 8h | 8h |
| 24 | 1.1.2 | **Análisis de Requerimientos** |  | 14d | 2019-09-21 A | 2019-10-07 A |  | 100% |  | 2019-09-21 | 2019-10-07 | 14d |  |  | 152h | 152h |
| 25 | 1.1.2.1 | **Generar Modelo de Caso de Uso** |  | 14d | 2019-09-21 A | 2019-10-07 A |  | 100% |  | 2019-09-21 | 2019-10-07 | 14d |  |  | 152h | 152h |
| 26 | 1.1.2.1.1 | Obtener lista de requisitos candidatos |  | 3d | 2019-09-21 A | 2019-09-25 A | 21 | 100% |  | 2019-09-21 | 2019-09-25 | 3d |  | Analista | 24h | 24h |
| 27 | 1.1.2.1.2 | Definir actores del sistema |  | 1d | 2019-09-25 A | 2019-09-26 A | 26 | 100% |  | 2019-09-25 | 2019-09-26 | 1d |  | Analista | 8h | 8h |
| 28 | 1.1.2.1.3 | Elaborar breve descripción de los casos de usos del sistema |  | 3d | 2019-09-26 A | 2019-09-28 A | 27 | 100% |  | 2019-09-26 | 2019-09-28 | 3d |  | Analista | 24h | 24h |
| 29 | 1.1.2.1.4 | Construir diagrama de casos de uso del sistema |  | 1d | 2019-09-28 A | 2019-09-30 A | 28 | 100% |  | 2019-09-28 | 2019-09-30 | 1d |  | Analista | 8h | 8h |
| 30 | 1.1.2.1.5 | Determinar los beneficios tangibles e intangibles |  | 2d | 2019-09-30 A | 2019-10-02 A | 29 | 100% |  | 2019-09-30 | 2019-10-02 | 2d |  | Analista; Jefe de Proyecto | 32h | 32h |
| 31 | 1.1.2.1.6 | Estimar costo y esfuerzo |  | 2d | 2019-10-02 A | 2019-10-04 A | 30 | 100% |  | 2019-10-02 | 2019-10-04 | 2d |  | Analista; Jefe de Proyecto | 32h | 32h |
| 32 | 1.1.2.1.7 | Realizar lista de chequeo de los artefactos |  | 2d | 2019-10-04 A | 2019-10-07 A | 31 | 100% |  | 2019-10-04 | 2019-10-07 | 2d |  | Gestor de Calidad | 16h | 16h |
| 33 | 1.1.2.1.8 | Realizar commit de los artefactos |  | 1d | 2019-10-04 A | 2019-10-05 A | 31 | 100% |  | 2019-10-04 | 2019-10-05 | 1d |  | Gestor de Configuración | 8h | 8h |
| 34 | 1.2 | Objetivos del sistema | milestone | 0d | 2019-10-07 A | 2019-10-07 A | 32 | 100% |  | 2019-10-07 | 2019-10-07 |  |  |  |  |  |

| ID | WBS | Task | Type | Duration | Start | Finish | Predecessors | Complete | Remaining | Baseline start | Baseline finish | Baseline duration | Total slack | Resources | Work | Actual work |
| --- | --- | --- | --- | --- | --- | --- | --- | --- | --- | --- | --- | --- | --- | --- | --- | --- |
| 35 | 1.3 | **Fase de Elaboración** |  | 31d | 2019-10-07 A | 2019-11-12 |  | 8% | 28.68d | 2019-10-07 | 2019-11-12 | 31d | 43d |  | 280h | 21h |
| 36 | 1.3.1 | **Análisis y Diseño** |  | 31d | 2019-10-07 A | 2019-11-12 |  | 8% | 28.68d | 2019-10-07 | 2019-11-12 | 31d | 43d |  | 280h | 21h |
| 37 | 1.3.1.1 | **Generar Modelo de Análisis** |  | 13d | 2019-10-07 A | 2019-10-22 |  | 19% | 10.56d | 2019-10-07 | 2019-10-22 | 13d | 61d |  | 112h | 21h |
| 38 | 1.3.1.1.1 | Definir requisitos funcionales del sistema |  | 1d | 2019-10-07 A | 2019-10-08 A | 34 | 100% |  | 2019-10-07 | 2019-10-08 | 1d |  | Analista | 8h | 8h |
| 39 | 1.3.1.1.2 | Construir diagrama de paquetes |  | 2d | 2019-10-08 A | 2019-10-11 | 38 | 81% | 0.38d | 2019-10-08 | 2019-10-11 | 2d | 0d | Analista | 16h | 13h |
| 40 | 1.3.1.1.3 | Definir una arquitectura candidata |  | 3d | 2019-10-11 | 2019-10-15 | 39 |  |  | 2019-10-11 | 2019-10-15 | 3d | 0d | Analista | 24h |  |
| 41 | 1.3.1.1.4 | Elaborar especificación de los requisitos del sistema |  | 2d | 2019-10-15 | 2019-10-17 | 40 |  |  | 2019-10-15 | 2019-10-17 | 2d | 0d | Analista | 16h |  |
| 42 | 1.3.1.1.5 | Diseñar diagrama de clases de análisis |  | 2d | 2019-10-17 | 2019-10-18 | 41 |  |  | 2019-10-17 | 2019-10-18 | 2d | 0d | Analista | 16h |  |
| 43 | 1.3.1.1.6 | Construir diagrama de secuencia |  | 1d | 2019-10-18 | 2019-10-19 | 42 |  |  | 2019-10-18 | 2019-10-19 | 1d | 0d | Analista | 8h |  |
| 44 | 1.3.1.1.7 | Realizar lista de chequeo de los artefactos |  | 2d | 2019-10-19 | 2019-10-22 | 43 |  |  | 2019-10-19 | 2019-10-22 | 2d | 61d | Gestor de Calidad | 16h |  |
| 45 | 1.3.1.1.8 | Realizar commit de los artefactos |  | 1d | 2019-10-19 | 2019-10-21 | 43 |  |  | 2019-10-19 | 2019-10-21 | 1d | 62d | Gestor de Configuración | 8h |  |
| 46 | 1.3.1.2 | **Generar Modelo de Mapa de Navegación** |  | 6d | 2019-10-19 | 2019-10-28 |  |  |  | 2019-10-19 | 2019-10-28 | 6d | 0d |  | 48h |  |
| 47 | 1.3.1.2.1 | Diseñar prototipo de interfaz de usuario |  | 4d | 2019-10-19 | 2019-10-24 | 43 |  |  | 2019-10-19 | 2019-10-24 | 4d | 0d | Analista | 32h |  |
| 48 | 1.3.1.2.2 | Diseñar diagrama de estado |  | 2d | 2019-10-24 | 2019-10-28 | 47 |  |  | 2019-10-24 | 2019-10-28 | 2d | 0d | Analista | 16h |  |
| 49 | 1.3.1.3 | **Generar Modelo de Diseño** |  | 14d | 2019-10-28 | 2019-11-12 |  |  |  | 2019-10-28 | 2019-11-12 | 14d | 0d |  | 120h |  |
| 50 | 1.3.1.3.1 | Definir mecanismos de diseño |  | 2d | 2019-10-28 | 2019-10-30 | 48 |  |  | 2019-10-28 | 2019-10-30 | 2d | 0d | Analista | 16h |  |
| 51 | 1.3.1.3.2 | Diseñar diagrama de clases de diseño |  | 2d | 2019-10-30 | 2019-11-01 | 50 |  |  | 2019-10-30 | 2019-11-01 | 2d | 0d | Analista | 16h |  |
| 52 | 1.3.1.3.3 | Construir diagrama de secuecia de diseño |  | 2d | 2019-11-01 | 2019-11-04 | 51 |  |  | 2019-11-01 | 2019-11-04 | 2d | 0d | Analista | 16h |  |
| 53 | 1.3.1.3.4 | Diseñar subsistemas |  | 2d | 2019-11-04 | 2019-11-06 | 52 |  |  | 2019-11-04 | 2019-11-06 | 2d | 0d | Analista | 16h |  |
| 54 | 1.3.1.3.5 | Definir patrones de diseño |  | 1d | 2019-11-06 | 2019-11-06 | 53 |  |  | 2019-11-06 | 2019-11-06 | 1d | 0d | Analista | 8h |  |
| 55 | 1.3.1.3.6 | Diseñar modelo físico y lógico de la base de datos |  | 3d | 2019-11-07 | 2019-11-09 | 54 |  |  | 2019-11-07 | 2019-11-09 | 3d | 0d | Analista | 24h |  |
| 56 | 1.3.1.3.7 | Realizar lista de chequeo de los artefactos |  | 2d | 2019-11-09 | 2019-11-12 | 55 |  |  | 2019-11-09 | 2019-11-12 | 2d | 0d | Gestor de Calidad | 16h |  |
| 57 | 1.3.1.3.8 | Realizar commit de los artefactos |  | 1d | 2019-11-09 | 2019-11-11 | 55 |  |  | 2019-11-09 | 2019-11-11 | 1d | 44d | Gestor de Configuración | 8h |  |
| 58 | 1.4 | Línea base de arquitectura | milestone | 0d | 2019-11-12 | 2019-11-12 | 56 |  |  | 2019-11-12 | 2019-11-12 |  | 0d |  |  |  |

| ID | WBS | Task | Type | Duration | Start | Finish | Predecessors | Baseline start | Baseline finish | Baseline duration | Total slack | Resources | Work |
| --- | --- | --- | --- | --- | --- | --- | --- | --- | --- | --- | --- | --- | --- |
| 59 | 1.5 | **Fase de Construcción** |  | 40d | 2019-11-12 | 2019-12-26 |  | 2019-11-12 | 2019-12-26 | 40d | 0d |  | 1248h |
| 60 | 1.5.1 | **Implementación** |  | 33d | 2019-11-12 | 2019-12-18 |  | 2019-11-12 | 2019-12-18 | 33d | 0d |  | 1104h |
| 61 | 1.5.1.1 | **Generar Modelo de Implementación** |  | 33d | 2019-11-12 | 2019-12-18 |  | 2019-11-12 | 2019-12-18 | 33d | 0d |  | 1104h |
| 62 | 1.5.1.1.1 | Identificar los componentes a programar |  | 26d | 2019-11-12 | 2019-12-11 | 58 | 2019-11-12 | 2019-12-11 | 26d | 0d | Programador | 208h |
| 63 | 1.5.1.1.2 | Identificar los componentes a reutilizar |  | 26d | 2019-11-12 | 2019-12-11 | 62SS | 2019-11-12 | 2019-12-11 | 26d | 0d | Programador | 208h |
| 64 | 1.5.1.1.3 | Construir el diagrama de componentes |  | 26d | 2019-11-12 | 2019-12-11 | 63SS | 2019-11-12 | 2019-12-11 | 26d | 0d | Programador | 208h |
| 65 | 1.5.1.1.4 | Crear la base de datos |  | 20d | 2019-11-12 | 2019-12-04 | 64SS | 2019-11-12 | 2019-12-04 | 20d | 0d | Programador | 160h |
| 66 | 1.5.1.1.5 | Programar el proceso de no conformidades |  | 30d | 2019-11-15 | 2019-12-18 | 65SS+1.5% | 2019-11-15 | 2019-12-18 | 30d | 0d | Programador | 240h |
| 67 | 1.5.1.1.6 | Programar las funciones de usuario |  | 10d | 2019-12-02 | 2019-12-13 | 66SS+5% | 2019-12-02 | 2019-12-13 | 10d | 15d | Programador | 80h |
| 68 | 1.5.2 | **Prueba** |  | 9d | 2019-12-16 | 2019-12-26 |  | 2019-12-16 | 2019-12-26 | 9d | 0d |  | 144h |
| 69 | 1.5.2.1 | Diseñar los casos de prueba |  | 5d | 2019-12-16 | 2019-12-21 | 66FF+1% | 2019-12-16 | 2019-12-21 | 5d | 0d | Probador | 40h |
| 70 | 1.5.2.2 | Diseñar los procedimientos de prueba |  | 3d | 2019-12-17 | 2019-12-20 | 69FF-2.5% | 2019-12-17 | 2019-12-20 | 3d | 8.25d | Probador | 24h |
| 71 | 1.5.2.3 | Probar los algoritmos programados |  | 2d | 2019-12-19 | 2019-12-21 | 69FF | 2019-12-19 | 2019-12-21 | 2d | 7d | Probador | 16h |
| 72 | 1.5.2.4 | Determinar la calidad del software |  | 2d | 2019-12-19 | 2019-12-21 | 69FF | 2019-12-19 | 2019-12-21 | 2d | 0d | Probador | 16h |
| 73 | 1.5.2.5 | Verificar la especificación de los requisitos frente al sistema liberado |  | 2d | 2019-12-21 | 2019-12-24 | 72 | 2019-12-21 | 2019-12-24 | 2d | 0d | Probador | 16h |
| 74 | 1.5.2.6 | Validar el diseño y arquitectiura del producto final |  | 2d | 2019-12-24 | 2019-12-26 | 73 | 2019-12-24 | 2019-12-26 | 2d | 0d | Probador | 16h |
| 75 | 1.5.2.7 | Validar la implementación de los requisitos |  | 2d | 2019-12-24 | 2019-12-26 | 74SS | 2019-12-24 | 2019-12-26 | 2d | 0d | Probador | 16h |
| 76 | 1.6 | Capacidad operativa inicial | milestone | 0d | 2019-12-26 | 2019-12-26 | 75 | 2019-12-26 | 2019-12-26 |  | 0d |  |  |
| 77 | 1.7 | **Fase de Transición** |  | 3d | 2019-12-26 | 2019-12-30 |  | 2019-12-26 | 2019-12-30 | 3d | 0d |  | 96h |
| 78 | 1.7.1 | **Despliegue** |  | 3d | 2019-12-26 | 2019-12-30 |  | 2019-12-26 | 2019-12-30 | 3d | 0d |  | 80h |
| 79 | 1.7.1.1 | Especificar la instalación del producto |  | 2d | 2019-12-26 | 2019-12-28 | 76 | 2019-12-26 | 2019-12-28 | 2d | 0d | Gestor de Calidad | 16h |
| 80 | 1.7.1.2 | Probar la instalación del producto |  | 2d | 2019-12-26 | 2019-12-28 | 79SS | 2019-12-26 | 2019-12-28 | 2d | 0d | Gestor de Calidad | 16h |
| 81 | 1.7.1.3 | Crear el material para la consulta y capacitación del usuario |  | 3d | 2019-12-26 | 2019-12-30 | 80SS | 2019-12-26 | 2019-12-30 | 3d | 0d | Gestor de Calidad | 24h |
| 82 | 1.7.1.4 | Validar el diseño del producto de software |  | 2d | 2019-12-26 | 2019-12-28 | 81SS | 2019-12-26 | 2019-12-28 | 2d | 0d | Gestor de Calidad | 16h |
| 83 | 1.7.1.5 | Entregar el producto funcionando al usuario |  | 1d | 2019-12-28 | 2019-12-30 | 82 | 2019-12-28 | 2019-12-30 | 1d | 0d | Gestor de Calidad | 8h |

| ID | WBS | Task | Type | Duration | Start | Finish | Predecessors | Baseline start | Baseline finish | Baseline duration | Total slack | Free slack | Resources | Work |
| --- | --- | --- | --- | --- | --- | --- | --- | --- | --- | --- | --- | --- | --- | --- |
| 84 | 1.7.2 | **Gestión de configuración y el cambio** |  | 2d | 2019-12-26 | 2019-12-28 |  | 2019-12-26 | 2019-12-28 | 2d | 1d |  |  | 16h |
| 85 | 1.7.2.1 | Varificar los cambios a los requisitos |  | 1d | 2019-12-26 | 2019-12-27 | 76 | 2019-12-26 | 2019-12-27 | 1d | 1d | 0d | Gestor de Configuración | 8h |
| 86 | 1.7.2.2 | Verificar los cambios a los artefactos |  | 1d | 2019-12-27 | 2019-12-28 | 85 | 2019-12-27 | 2019-12-28 | 1d | 1d |  | Gestor de Configuración | 8h |
| 87 | 1.8 | Lanzamiento del producto | milestone | 0d | 2019-12-30 | 2019-12-30 | 83 | 2019-12-30 | 2019-12-30 |  | 0d |  |  |  |
